# CSM 3.2

Schedule from MS Project, 2006-04-20 to 2006-12-22, A marks actual dates.
NCI

## Calendars

- Standard: Mon-Fri 08:00-12:00, 13:00-17:00; Sat-Sun off. Exceptions (off unless hours are given): 2006-05-29, 2006-09-04, 2006-11-23.

## Resources

| Resource |
| --- |
| Charles |
| Avinash |
| Kunal |
| Orlando |
| Steven |
| Denise |
| BioPharm |
| Kuanl |
| Steve |
| QA |
| Tech Writing NCICB |
| Ch |
| Vijay |

## Schedule

| ID | WBS | Task | Type | Duration | Start | Finish | Predecessors | Complete | Remaining | Total slack | Free slack | Constraint | Resources | Work | Actual work |
| --- | --- | --- | --- | --- | --- | --- | --- | --- | --- | --- | --- | --- | --- | --- | --- |
| 1 | 1 | **CSM 3.2** |  | 173d? | 2006-04-20 A | 2006-12-22 |  | 61% | 66.84d? | 0d |  |  |  | 4334.16h | 2811.52h |
| 2 | 1.1 | **Elaboration** |  | 73d? | 2006-04-20 A | 2006-08-01 |  | 92% | 5.75d? | 100d |  |  |  | 1271h | 1239h |
| 3 | 1.1.1 | **Iteration 1** |  | 34d? | 2006-04-20 A | 2006-06-07 |  | 83% | 5.86d? | 139d |  |  |  | 638.8h | 606.8h |
| 4 | 1.1 | Kick off | milestone | 0d | 2006-04-20 A | 2006-04-20 A |  | 100% |  |  |  | start no earlier than 2006-04-20 | Denise; Charles; Orlando; Steven; Avinash |  |  |
| 5 | 1.1.1.2 | **21 CFR Part 11** |  | 34d | 2006-04-20 A | 2006-06-07 |  | 35% | 22.1d | 139d |  |  |  | 205.6h | 173.6h |
| 6 | 1.1.1.2.1 | Preperation |  | 7d | 2006-04-20 A | 2006-04-28 A |  | 100% |  |  |  |  | Charles [10%]; Orlando; Steven; Kunal | 173.6h | 173.6h |
| 7 | 1.1.1.2.2 | Kickoff Meeting With Biopharm | milestone | 0d | 2006-05-01 A | 2006-05-01 A |  | 100% |  |  |  | start no earlier than 2006-05-01 | Charles [10%]; Orlando; Steven; Kunal |  |  |
| 8 | 1.1.1.2.3 | Biopharm resources allocated | milestone | 0d | 2006-05-15 | 2006-05-15 |  |  |  | 141d | 0d | start no earlier than 2006-05-15 | BioPharm |  |  |
| 9 | 1.1.1.2.4 | Deliver Materials |  | 3d | 2006-05-17 | 2006-05-19 | 8FS+2d |  |  | 141d | 0d |  | Steven | 24h |  |
| 10 | 1.1.1.2.5 | Provide Validation Support |  | 10d | 2006-05-22 | 2006-06-07 | 9 |  |  | 139d |  |  | Steven [10%] | 8h |  |
| 11 | 1.1.1.3 | **Project Scope** |  | 20d? | 2006-05-01 A | 2006-05-26 A |  | 100% |  |  |  |  |  | 382h | 382h |
| 12 | 1.1.1.3.1 | Create/Revise Candidate Requirements Document |  | 4d | 2006-05-01 A | 2006-05-04 A | 6 | 100% |  |  |  |  | Charles [10%]; Steven; Orlando; Kunal | 99.2h | 99.2h |
| 13 | 1.2 | Revised Scope w/Product Manager | milestone | 0d | 2006-05-04 A | 2006-05-04 A |  | 100% |  |  |  |  | Charles; Avinash |  |  |
| 14 | 1.1.1.3.3 | Define Elaboration Task Plan |  | 1d? | 2006-05-05 A | 2006-05-05 A | 12 | 100% |  |  |  |  | Charles [10%]; Orlando; Kunal; Steven | 24.8h | 24.8h |
| 15 | 1.1.1.3.4 | Create/Update Scope Document |  | 15d | 2006-05-08 A | 2006-05-26 A | 14 | 100% |  |  |  |  | Charles [10%] | 12h | 12h |
| 16 | 1.1.1.3.5 | Obtain Changes/Fixes from BMS and map to current scope |  | 4d | 2006-05-15 A | 2006-05-18 A |  | 100% |  |  |  | start no earlier than 2006-05-15 | Steven [90%] | 28.8h | 28.8h |
| 17 | 1.1.1.3.6 | **LOE/Requirements Gathering** |  | 14d | 2006-05-08 A | 2006-05-25 A | 14 | 100% |  |  |  |  |  | 217.2h | 217.2h |
| 18 | 1.1.1.3.6.1 | Obtain exact JDK version for next release |  | 0.25d | 2006-05-08 A | 2006-05-08 A |  | 100% |  |  |  |  | Kunal | 2h | 2h |
| 19 | 1.1.1.3.6.2 | High Level Diagram of Grid-CSM Integration |  | 2d | 2006-05-08 A | 2006-05-10 A | 18 | 100% |  |  |  |  | Kunal | 16h | 16h |
| 20 | 1.1.1.3.6.3 | High Level Diagram of CSM Web Service |  | 1d | 2006-05-10 A | 2006-05-11 A | 19 | 100% |  |  |  |  | Kunal | 8h | 8h |
| 21 | 1.1.1.3.6.4 | Deliver Diagrams to Avinash | milestone | 0d | 2006-05-11 A | 2006-05-11 A | 20 | 100% |  |  |  |  | Kuanl |  |  |
| 22 | 1.1.1.3.6.5 | IMF Presentation |  | 2d | 2006-05-11 A | 2006-05-15 A | 21 | 100% |  |  |  |  | Kunal | 16h | 16h |
| 23 | 1.1.1.3.6.6 | Estimate Tying User to Application |  | 1d | 2006-05-15 A | 2006-05-16 A | 22 | 100% |  |  |  |  | Kunal | 8h | 8h |
| 24 | 1.1.1.3.6.7 | Estimate for Grid Integration/ Project Scope Doc |  | 6d | 2006-05-16 A | 2006-05-24 A | 23 | 100% |  |  |  |  | Kunal | 48h | 48h |
| 25 | 1.1.1.3.6.8 | Meet with Apps for Performance Requirements |  | 0.25d | 2006-05-11 A | 2006-05-11 A |  | 100% |  |  |  | start no earlier than 2006-05-11 | Kunal; Orlando | 4h | 4h |
| 26 | 1.1.1.3.6.9 | Prototyp Generic LDAP |  | 2.5d | 2006-05-08 A | 2006-05-10 A |  | 100% |  |  |  |  | Orlando | 20h | 20h |
| 27 | 1.1.1.3.6.10 | Estimate Auth Policy Caching |  | 3d | 2006-05-10 A | 2006-05-15 A | 26 | 100% |  |  |  |  | Orlando | 24h | 24h |
| 28 | 1.1.1.3.6.11 | Estimate CLM Logging to text file and Log Viewer Mods |  | 2d | 2006-05-15 A | 2006-05-17 A | 27 | 100% |  |  |  |  | Orlando | 16h | 16h |
| 29 | 1.1.1.3.6.12 | Estimate BMS Webservice Integration |  | 2.5d | 2006-05-17 A | 2006-05-19 A | 28 | 100% |  |  |  |  | Orlando | 20h | 20h |
| 30 | 1.1.1.3.6.13 | Estimate BMS Integration Work |  | 4d | 2006-05-22 A | 2006-05-25 A | 29 | 100% |  |  |  |  | Orlando; Charles [10%] | 35.2h | 35.2h |
| 31 | 1.1.1.4 | NCICB Management Review Complete | milestone | 0d | 2006-05-17 A | 2006-05-17 A |  | 100% |  |  |  | start no earlier than 2006-05-17 |  |  |  |
| 32 | 1.1.1.5 | Update Scope |  | 2.95d | 2006-05-26 A | 2006-05-31 A | 17 | 100% |  |  |  |  | Charles [10%]; Orlando; Kunal | 49.6h | 49.6h |
| 33 | 1.1.1.6 | User Feedback Sessions Complete | milestone | 0d | 2006-05-26 A | 2006-05-26 A |  | 100% |  |  |  | start no earlier than 2006-05-26 |  |  |  |
| 34 | 1.1.1.8 | Revise Task Plan |  | 2d | 2006-05-31 A | 2006-06-02 A | 32 | 100% |  |  |  |  | Charles [10%] | 1.6h | 1.6h |

| ID | WBS | Task | Type | Duration | Start | Finish | Predecessors | Complete | Constraint | Resources | Work | Actual work |
| --- | --- | --- | --- | --- | --- | --- | --- | --- | --- | --- | --- | --- |
| 35 | 1.1.2 | **Iteration 2** |  | 22.95d | 2006-05-19 A | 2006-06-21 A |  | 100% |  |  | 245h | 245h |
| 36 | 1.1.2.1 | **Detail Requirements** |  | 18.95d | 2006-05-19 A | 2006-06-15 A |  | 100% |  |  | 241h | 241h |
| 37 | 1.1.2.1.1 | **Define Use Cases** |  | 18.95d | 2006-05-19 A | 2006-06-15 A |  | 100% |  |  | 241h | 241h |
| 38 | 1.1.2.1.1.1 | **UPT** |  | 10.5d | 2006-05-19 A | 2006-06-05 A |  | 100% |  |  | 68.4h | 68.4h |
| 39 | 1.1.2.1.1.1.1 | Write Initial Draft 30% |  | 1.5d | 2006-05-19 A | 2006-05-22 A | 16 | 100% |  | Steven | 12h | 12h |
| 40 | 1.1.2.1.1.1.2 | Write Internal Review 60 % |  | 1.5d | 2006-05-22 A | 2006-05-23 A | 39 | 100% |  | Steven | 12h | 12h |
| 41 | 1.1.2.1.1.1.3 | Write Final Complete 100% |  | 2d | 2006-05-24 A | 2006-05-25 A | 40 | 100% |  | Steven | 16h | 16h |
| 42 | 1.1.2.1.1.1.4 | Review |  | 1d | 2006-05-26 A | 2006-05-31 A | 41 | 100% |  | Steven; Charles [10%] | 4.4h | 4.4h |
| 43 | 1.1.2.1.1.1.5 | Update per Review |  | 3d | 2006-05-31 A | 2006-06-05 A | 42 | 100% |  | Steven | 24h | 24h |
| 44 | 1.1.2.1.1.2 | **Web Service** |  | 7d | 2006-05-31 A | 2006-06-09 A |  | 100% |  |  | 64.2h | 64.2h |
| 45 | 1.1.2.1.1.2.1 | Write Internal Review 60% |  | 5d | 2006-05-31 A | 2006-06-07 A | 32 | 100% |  | Kunal | 40h | 40h |
| 46 | 1.1.2.1.1.2.2 | Write Final Complete 100% |  | 1d | 2006-06-07 A | 2006-06-08 A | 45 | 100% |  | Kunal | 8h | 8h |
| 47 | 1.1.2.1.1.2.3 | Review |  | 0.25d | 2006-06-08 A | 2006-06-09 A | 46 | 100% |  | Kunal; Steve; Charles [10%] | 4.2h | 4.2h |
| 48 | 1.1.2.1.1.2.4 | Update per Review |  | 0.75d | 2006-06-09 A | 2006-06-09 A | 47 | 100% |  | Kunal; Steve | 12h | 12h |
| 49 | 1.1.2.1.1.3 | **CSM APIs** |  | 7.5d | 2006-05-31 A | 2006-06-12 A |  | 100% |  |  | 68.2h | 68.2h |
| 50 | 1.1.2.1.1.3.1 | Write Initial Draft 30% |  | 2.5d | 2006-05-31 A | 2006-06-05 A | 32 | 100% |  | Orlando | 20h | 20h |
| 51 | 1.1.2.1.1.3.2 | Write Internal Review 60 % |  | 2d | 2006-06-05 A | 2006-06-07 A | 50 | 100% |  | Orlando | 16h | 16h |
| 52 | 1.1.2.1.1.3.3 | Write Final Complete 100% |  | 2d | 2006-06-07 A | 2006-06-09 A | 51 | 100% |  | Orlando | 16h | 16h |
| 53 | 1.1.2.1.1.3.4 | Review |  | 0.25d | 2006-06-09 A | 2006-06-09 A | 52 | 100% |  | Orlando; Steve; Charles [10%] | 4.2h | 4.2h |
| 54 | 1.1.2.1.1.3.5 | Update per Review |  | 0.75d | 2006-06-09 A | 2006-06-12 A | 53 | 100% |  | Orlando; Steve | 12h | 12h |
| 55 | 1.1.2.1.1.4 | **- Performance Enhancements** |  | 4d | 2006-06-09 A | 2006-06-15 A |  | 100% |  |  | 40.2h | 40.2h |
| 56 | 1.1.2.1.1.4.1 | Write Internal Review 60% |  | 2d | 2006-06-09 A | 2006-06-13 A | 44 | 100% |  | Kunal | 16h | 16h |
| 57 | 1.1.2.1.1.4.2 | Write Final Complete 100% |  | 1d | 2006-06-13 A | 2006-06-14 A | 56 | 100% |  | Kunal | 8h | 8h |
| 58 | 1.1.2.1.1.4.3 | Review |  | 0.25d | 2006-06-14 A | 2006-06-15 A | 57 | 100% |  | Kunal; Steve; Charles [10%] | 4.2h | 4.2h |
| 59 | 1.1.2.1.1.4.4 | Update per Review |  | 0.75d | 2006-06-15 A | 2006-06-15 A | 58 | 100% |  | Kunal; Steve | 12h | 12h |
| 60 | 1.1.2.3 | Revise Scope Document |  | 1d | 2006-06-14 A | 2006-06-15 A | 36FS-1d | 100% |  | Charles [10%] | 0.8h | 0.8h |
| 61 | 1.1.2.4 | Revised Scope Document Complete | milestone | 0d | 2006-06-13 A | 2006-06-13 A |  | 100% | start no earlier than 2006-06-13 |  |  |  |
| 62 | 1.1.2.7 | Revise Task Plan |  | 4d | 2006-06-15 A | 2006-06-21 A | 60 | 100% |  | Charles [10%] | 3.2h | 3.2h |
| 63 | 1.1.2.8 | Revised PM Project Plan Submitted | milestone | 0d | 2006-06-19 A | 2006-06-19 A |  | 100% | start no earlier than 2006-06-19 |  |  |  |

| ID | WBS | Task | Type | Duration | Start | Finish | Predecessors | Complete | Constraint | Resources | Work | Actual work |
| --- | --- | --- | --- | --- | --- | --- | --- | --- | --- | --- | --- | --- |
| 64 | 1.1.3 | **Iteration 3** |  | 19.5d | 2006-06-12 A | 2006-07-07 A |  | 100% |  |  | 339.2h | 339.2h |
| 65 | 1.1.3.1 | **Test Plan** |  | 16d | 2006-06-15 A | 2006-07-07 A |  | 100% |  |  | 113.6h | 113.6h |
| 66 | 1.1.3.1 | Review Testability of Requirements |  | 4d | 2006-06-15 A | 2006-06-21 A | 59 | 100% |  | Steven | 32h | 32h |
| 67 | 1.1.3.2 | Test Plan Development Intial Template Draft |  | 2d | 2006-06-21 A | 2006-06-23 A | 66 | 100% |  | Steven | 16h | 16h |
| 68 | 1.1.3.3 | Test Plan Development 80% Completion |  | 6d | 2006-06-23 A | 2006-07-03 A | 67 | 100% |  | Steven | 48h | 48h |
| 69 | 1.1.3.4 | Test Plan Development Internal Review 100% Completion |  | 2d | 2006-07-03 A | 2006-07-05 A | 68 | 100% |  | Charles [10%] | 1.6h | 1.6h |
| 70 | 1.1.3.5 | Test Plan Development Rework |  | 2d | 2006-07-05 A | 2006-07-07 A | 69 | 100% |  | Steven | 16h | 16h |
| 71 | 1.1.3.2 | **Design** |  | 12.55d | 2006-06-12 A | 2006-06-28 A |  | 100% |  |  | 84h | 84h |
| 72 | 1.1.3.2.1 | **Create General Design Document** |  | 5d | 2006-06-12 A | 2006-06-19 A | 49 | 100% |  |  | 20h | 20h |
| 73 | 1.1.3.2.1.1 | Review Draft at 50% |  | 2.5d | 2006-06-12 A | 2006-06-14 A |  | 100% |  | Orlando | 20h | 20h |
| 74 | 1.1.3.2.1.2 | Complete Draft/Final Review |  | 2.5d | 2006-06-14 A | 2006-06-19 A | 73 | 100% |  |  |  |  |
| 75 | 1.1.3.2.2 | General Design Doc Posted for Review | milestone | 0d | 2006-06-19 A | 2006-06-19 A |  | 100% | start no earlier than 2006-06-19 | Orlando; Steve; Kunal |  |  |
| 76 | 1.1.3.2.3 | **Performance** |  | 5d | 2006-06-19 A | 2006-06-23 A | 75 | 100% |  |  | 40h | 40h |
| 77 | 1.1.3.7 | Performance Design Peparation |  | 3.5d | 2006-06-19 A | 2006-06-22 A | 55 | 100% |  | Kunal | 28h | 28h |
| 78 | 1.1.3.8 | Performance Design Internal Review |  | 0.5d | 2006-06-22 A | 2006-06-22 A | 77 | 100% |  | Kunal | 4h | 4h |
| 79 | 1.1.3.9 | Performance Design Rework |  | 1d | 2006-06-23 A | 2006-06-23 A | 78 | 100% |  | Kunal | 8h | 8h |
| 80 | 1.1.3.13 | CSM SAD |  | 3d | 2006-06-26 A | 2006-06-28 A | 79 | 100% |  | Kunal | 24h | 24h |
| 81 | 1.1.3.3 | **UML Model** |  | 8.55d | 2006-06-19 A | 2006-06-30 A |  | 100% |  |  | 17.6h | 17.6h |
| 82 | 1.1.2.5 | Update CSM Model |  | 2d | 2006-06-19 A | 2006-06-21 A | 74 | 100% |  | Orlando | 16h | 16h |
| 83 | 1.1.3.3.2 | Submit For Approval |  | 0.2d | 2006-06-21 A | 2006-06-21 A | 82 | 100% |  | Orlando | 1.6h | 1.6h |
| 84 | 1.1.2.6 | UML Model Changes Approved | milestone | 0d | 2006-06-30 A | 2006-06-30 A |  | 100% | start no earlier than 2006-06-30 |  |  |  |
| 85 | 1.1.3.6 | **Prototype** |  | 11.35d | 2006-06-21 A | 2006-07-06 A |  | 100% |  |  | 120h | 120h |
| 86 | 1.1.3.6.1 | Auth Caching |  | 4d | 2006-06-29 A | 2006-07-05 A | 80 | 100% |  | Kunal | 32h | 32h |
| 87 | 1.1.3.6.2 | Auth Caching - Review and Baselining |  | 1d | 2006-07-06 A | 2006-07-06 A | 86 | 100% |  | Kunal | 8h | 8h |
| 88 | 1.1.3.6.3 | Open/Active Directory LDAP |  | 4d | 2006-06-28 A | 2006-07-05 A | 91 | 100% |  | Orlando | 32h | 32h |
| 89 | 1.1.3.6.4 | Open/Active Directory LDAP - Code Review and Baselining |  | 1d | 2006-07-05 A | 2006-07-06 A | 88 | 100% |  | Orlando | 8h | 8h |
| 90 | 1.1.3.6.5 | Schema Support for SQL Server |  | 4d | 2006-06-21 A | 2006-06-27 A | 83 | 100% |  | Orlando | 32h | 32h |
| 91 | 1.1.3.6.6 | Schema Support for SQL Server - Code Review and Baselining |  | 1d | 2006-06-27 A | 2006-06-28 A | 90 | 100% |  | Orlando | 8h | 8h |
| 92 | 1.1.3.5 | Finalize Scope/Project Plan |  | 5d | 2006-06-19 A | 2006-06-23 A | 63 | 100% |  | Charles [10%] | 4h | 4h |
| 93 | 1.1.3.6 | Final 3.2 Scope/Project Plan to Gforge | milestone | 0d | 2006-06-26 A | 2006-06-26 A |  | 100% | start no earlier than 2006-06-26 |  |  |  |

| ID | WBS | Task | Type | Duration | Start | Finish | Predecessors | Complete | Remaining | Total slack | Constraint | Resources | Work | Actual work |
| --- | --- | --- | --- | --- | --- | --- | --- | --- | --- | --- | --- | --- | --- | --- |
| 94 | 1.1.4 | **Iteration 4** |  | 6d | 2006-07-25 A | 2006-08-01 A |  | 100% |  |  |  |  | 48h | 48h |
| 95 | 1.1.4.1 | **CLM** |  | 6d | 2006-07-25 A | 2006-08-01 A |  | 100% |  |  |  |  | 48h | 48h |
| 96 | 1.1.4.1.1 | Develop Requirements and Use Cases |  | 3d | 2006-07-25 A | 2006-07-27 A |  | 100% |  |  | start no earlier than 2006-07-25 | Vijay | 24h | 24h |
| 97 | 1.1.4.1.2 | Develop General Design |  | 3d | 2006-07-28 A | 2006-08-01 A | 96 | 100% |  |  |  | Vijay | 24h | 24h |
| 98 | 1.2 | **Construction** |  | 109.05d | 2006-06-23 A | 2006-11-28 |  | 55% | 48.66d | 18d |  |  | 2543.16h | 1572.52h |
| 99 | 1.2.1 | Production Support |  | 80d | 2006-07-12 | 2006-11-01 |  |  |  | 35d | start no earlier than 2006-07-12 | Orlando [15%]; Kunal [15%]; Steven [15%] | 273.6h |  |
| 100 | 1.2.2 | **Iteration 0.5** |  | 29.05d | 2006-06-23 A | 2006-08-03 |  | 99% | 0.03d | 98d |  |  | 477.56h | 477.16h |
| 101 | 1.2.2.1 | **Hibernate 3.1 Upgrade/JDK Backwards Compatibility/MySQL Upgrade Test** |  | 6d | 2006-07-06 A | 2006-07-14 |  | 99% | 0.05d | 112.35d |  |  | 48h | 47.6h |
| 102 | 1.2.2.1.1 | Development |  | 5d | 2006-07-06 A | 2006-07-13 A | 89 | 100% |  |  |  | Orlando | 40h | 40h |
| 103 | 1.2.2.1.2 | Regression Testing |  | 1d | 2006-07-13 A | 2006-07-14 | 102 | 95% | 0.05d | 112.35d |  | Orlando | 8h | 7.6h |
| 104 | 1.2.2.2 | **Open LDAP/Active Directory Authorization** |  | 4d | 2006-07-14 A | 2006-07-20 A |  | 100% |  |  |  |  | 32h | 32h |
| 105 | 1.2.2.2.1 | Design |  | 1d | 2006-07-14 A | 2006-07-17 A | 103 | 100% |  |  |  | Orlando | 8h | 8h |
| 106 | 1.2.2.2.2 | Development/Unit Test |  | 3d | 2006-07-17 A | 2006-07-20 A | 105 | 100% |  |  |  | Orlando | 24h | 24h |
| 107 | 1.2.2.3 | **Auth Policy Caching** |  | 6d | 2006-07-07 A | 2006-07-14 A |  | 100% |  |  |  |  | 48h | 48h |
| 108 | 1.2.2.3.1 | Design |  | 1d | 2006-07-07 A | 2006-07-07 A | 87 | 100% |  |  |  | Kunal | 8h | 8h |
| 109 | 1.2.2.3.2 | Development/Unit Testing |  | 5d | 2006-07-10 A | 2006-07-14 A | 108 | 100% |  |  |  | Kunal | 40h | 40h |
| 110 | 1.2.2.4 | **Expose Core Authorization Service as Web Service** |  | 10d | 2006-07-17 A | 2006-07-28 A |  | 100% |  |  |  |  | 80h | 80h |
| 111 | 1.2.2.4.1 | Design |  | 1d | 2006-07-17 A | 2006-07-17 A | 109 | 100% |  |  |  | Kunal | 8h | 8h |
| 112 | 1.2.2.4.2 | Development |  | 9d | 2006-07-18 A | 2006-07-28 A | 111 | 100% |  |  |  | Kunal | 72h | 72h |
| 113 | 1.2.2.4 | **BMS Web Service Integration** |  | 6d | 2006-07-20 A | 2006-07-28 A |  | 100% |  |  |  |  | 48h | 48h |
| 114 | 1.2.2.4.1 | Design |  | 1d | 2006-07-20 A | 2006-07-21 A | 106 | 100% |  |  |  | Orlando | 8h | 8h |
| 115 | 1.2.2.4.2 | Development/Unit Test |  | 5d | 2006-07-21 A | 2006-07-28 A | 114 | 100% |  |  |  | Orlando | 40h | 40h |
| 116 | 1.2.2.5 | Components Deployed on Dev Server | milestone | 0d | 2006-07-28 | 2006-07-28 | 115 |  |  | 102.35d |  | Kunal; Orlando |  |  |
| 117 | 1.2.2.6 | **Regression Test Complete Code Coverage** |  | 20d | 2006-06-23 A | 2006-07-21 A |  | 100% |  |  |  |  | 104h | 104h |
| 118 | 1.2.2.6.1 | Implementation |  | 13d | 2006-06-23 A | 2006-07-21 A | 67 | 100% |  |  |  | Steven | 104h | 104h |
| 119 | 1.2.2.7 | QA Test |  | 6d | 2006-07-21 A | 2006-07-31 A | 118 | 100% |  |  |  | Steven | 48h | 48h |
| 120 | 1.2.2.8 | Testing Support |  | 4.35d | 2006-07-28 A | 2006-08-03 A | 116 | 100% |  |  |  | Kunal; Orlando | 69.56h | 69.56h |

| ID | WBS | Task | Duration | Start | Finish | Predecessors | Complete | Remaining | Total slack | Constraint | Resources | Work | Actual work |
| --- | --- | --- | --- | --- | --- | --- | --- | --- | --- | --- | --- | --- | --- |
| 121 | 1.2.3 | **Iteration 1** | 56d | 2006-08-01 A | 2006-10-18 |  | 85% | 8.32d | 45d |  |  | 1036h | 888.96h |
| 122 | 1.2.3.1 | **NCICB Boot Camp Support** | 3d | 2006-08-04 A | 2006-08-08 A |  | 100% |  |  |  |  | 28h | 28h |
| 123 | 1.2.3.1.1 | Preparation/Presentation | 3d | 2006-08-04 A | 2006-08-08 A | 120 | 100% |  |  |  | Kunal | 24h | 24h |
| 124 | 1.2.3.1.2 | Presentation Support | 0.5d | 2006-08-04 A | 2006-08-04 A | 120 | 100% |  |  |  | Orlando | 4h | 4h |
| 125 | 1.2.3.2 | **Design** | 17.5d | 2006-08-04 A | 2006-08-29 A | 124 | 100% |  |  |  |  | 48h | 48h |
| 126 | 1.2.3.2.1 | Exception Handling | 2d | 2006-08-04 A | 2006-08-10 A |  | 100% |  |  |  | Kunal | 16h | 16h |
| 127 | 1.2.3.2.2 | BMS Code Integration | 2d | 2006-08-28 A | 2006-08-29 A | 126 | 100% |  |  |  | Vijay | 16h | 16h |
| 128 | 1.2.3.2.3 | Grid SAML Assertion Support | 2d | 2006-08-11 A | 2006-08-14 A | 126 | 100% |  |  |  | Kunal | 16h | 16h |
| 129 | 1.2.3.3 | **Improve Exception Handling** | 3d | 2006-09-01 A | 2006-09-06 A |  | 100% |  |  |  |  | 24h | 24h |
| 130 | 1.2.3.3.1 | Development/Unit Test | 3d | 2006-09-01 A | 2006-09-06 A | 131 | 100% |  |  |  | Kunal | 24h | 24h |
| 131 | 1.2.3.4 | **Grid SAML Assertion Support** | 13d | 2006-08-15 A | 2006-08-31 |  | 98% | 0.26d | 78d |  |  | 104h | 101.92h |
| 132 | 1.2.3.4.2 | Development | 13d | 2006-08-15 A | 2006-08-31 | 128 | 98% | 0.26d | 78d |  | Kunal | 104h | 101.92h |
| 133 | 1.2.3.5 | **Add new Type attribute to Protection Element** | 5d | 2006-09-07 A | 2006-09-13 A |  | 100% |  |  |  |  | 40h | 40h |
| 134 | 1.2.3.5.1 | Design | 2d | 2006-09-07 A | 2006-09-08 A | 129 | 100% |  |  |  | Kunal | 16h | 16h |
| 135 | 1.2.3.5.2 | Development | 3d | 2006-09-11 A | 2006-09-13 A | 134 | 100% |  |  |  | Kunal | 24h | 24h |
| 136 | 1.2.3.6 | **BMS Code Integration** | 10d | 2006-08-30 A | 2006-09-13 A |  | 100% |  |  |  |  | 80h | 80h |
| 137 | 1.2.3.6.1 | Development | 10d | 2006-08-30 A | 2006-09-13 A | 127 | 100% |  |  |  | Vijay | 80h | 80h |
| 138 | 1.2.3.7 | **CLM** | 45d | 2006-08-01 A | 2006-10-03 |  | 99% | 0.03d | 56d |  |  | 472h | 471.68h |
| 139 | 1.2.3.7.1 | **Query Interface** | 14d | 2006-08-01 A | 2006-08-18 |  | 99% | 0.04d | 87d |  |  | 112h | 111.68h |
| 140 | 1.2.3.7.1.1 | Design (All Query API changes) | 2d | 2006-08-01 A | 2006-08-02 A |  | 100% |  |  | finish no earlier than 2006-08-02 | Vijay | 16h | 16h |
| 141 | 1.2.3.7.1.2 | Create Object Model - Semantic Integration | 4d | 2006-08-03 A | 2006-08-08 | 140 | 99% | 0.04d | 95d |  | Vijay | 32h | 31.68h |
| 142 | 1.2.3.7.1.3 | Development | 8d | 2006-08-09 A | 2006-08-18 A | 141 | 100% |  |  | start no earlier than 2006-08-03 | Vijay | 64h | 64h |
| 143 | 1.2.3.7.2 | **Use NCI Template** | 5d | 2006-08-21 A | 2006-08-25 A |  | 100% |  |  |  |  | 40h | 40h |
| 144 | 1.2.3.7.2.1 | Design | 1d | 2006-08-21 A | 2006-08-21 A | 139 | 100% |  |  | start no earlier than 2006-08-21 | Vijay | 8h | 8h |
| 145 | 1.2.3.7.2.2 | Development | 4d | 2006-08-22 A | 2006-08-25 A | 144 | 100% |  |  | start no earlier than 2006-08-22 | Vijay | 32h | 32h |

| ID | WBS | Task | Duration | Start | Finish | Predecessors | Complete | Remaining | Total slack | Free slack | Constraint | Resources | Work | Actual work |
| --- | --- | --- | --- | --- | --- | --- | --- | --- | --- | --- | --- | --- | --- | --- |
| 146 | 1.2.3.7.3 | **Limit view by Organization, Object ID, Object Name** | 10d | 2006-09-18 A | 2006-09-29 A |  | 100% |  |  |  |  |  | 80h | 80h |
| 147 | 1.2.3.7.3.1 | Design | 1d | 2006-09-18 A | 2006-09-18 A | 154 | 100% |  |  |  | start no earlier than 2006-08-15 | Kunal | 8h | 8h |
| 148 | 1.2.3.7.3.2 | Development | 9d | 2006-09-19 A | 2006-09-29 A | 147 | 100% |  |  |  | start no earlier than 2006-08-16 | Kunal | 72h | 72h |
| 149 | 1.2.3.7.4 | **Retreive Log Messages based on Object's Primary Key (Unique Key)** | 12d | 2006-09-14 A | 2006-09-29 A |  | 100% |  |  |  |  |  | 96h | 96h |
| 150 | 1.2.3.7.4.1 | Development | 12d | 2006-09-14 A | 2006-09-29 A | 151 | 100% |  |  |  |  | Vijay | 96h | 96h |
| 151 | 1.2.3.7.5 | **Refactor Log Viewer to use Query API's to retrieve the results** | 4d | 2006-09-08 A | 2006-09-13 A |  | 100% |  |  |  |  |  | 32h | 32h |
| 152 | 1.2.3.7.5.1 | Design | 1d | 2006-09-08 A | 2006-09-08 A |  | 100% |  |  |  | start no earlier than 2006-08-21 | Vijay | 8h | 8h |
| 153 | 1.2.3.7.5.2 | Development | 3d | 2006-09-11 A | 2006-09-13 A | 152 | 100% |  |  |  | start no earlier than 2006-08-22 | Vijay | 24h | 24h |
| 154 | 1.2.3.7.6 | **Utilize CSM for authentication/authorization** | 10d | 2006-09-01 A | 2006-09-15 A |  | 100% |  |  |  |  |  | 80h | 80h |
| 155 | 1.2.3.7.6.1 | Development/Unit Test | 10d | 2006-09-01 A | 2006-09-15 A |  | 100% |  |  |  | finish no earlier than 2006-08-31 | Kunal | 80h | 80h |
| 156 | 1.2.3.7.7 | **Testing Integration** | 2d | 2006-10-02 A | 2006-10-03 A |  | 100% |  |  |  |  |  | 32h | 32h |
| 157 | 1.2.3.7.7.1 | Execution | 2d | 2006-10-02 A | 2006-10-03 A | 149, 146 | 100% |  |  |  | start no earlier than 2006-09-08 | Vijay; Kunal | 32h | 32h |
| 158 | 1.2.3.8 | **QA Test Components** | 29d | 2006-09-01 A | 2006-10-12 |  | 36% | 18.45d | 49d |  |  |  | 88h | 32h |
| 159 | 1.2.3.8.1 | CSM | 4d | 2006-09-01 A | 2006-09-07 A | 131 | 100% |  |  |  |  | QA | 32h | 32h |
| 160 | 1.2.3.8.2 | CLM | 7d | 2006-10-04 | 2006-10-12 | 156 |  |  | 49d |  |  | QA | 56h |  |
| 161 | 1.2.3.9 | **Test Support** | 21d | 2006-09-14 A | 2006-10-12 |  | 36% | 13.44d | 45d |  |  |  | 120h | 63.36h |
| 162 | 1.2.3.9.1 | CSM | 4d | 2006-09-14 A | 2006-09-19 | 133 | 99% | 0.04d | 46.5d | 0d |  | Kunal; Vijay | 64h | 63.36h |
| 163 | 1.2.3.9.2 | CLM | 7d | 2006-10-04 | 2006-10-12 | 157 |  |  | 45d | 0d |  | Vijay | 56h |  |
| 164 | 1.2.3.10 | **Documentation** | 4d | 2006-10-13 | 2006-10-18 |  |  |  | 45d |  |  |  | 32h |  |
| 165 | 1.2.3.10.1 | CLM User Guide Update | 4d | 2006-10-13 | 2006-10-18 | 163 |  |  | 45d |  |  | Vijay | 32h |  |
| 166 | 1.2.4 | **Iteration 2** | 14d | 2006-09-20 A | 2006-10-09 |  | 79% | 3d | 52d |  |  |  | 220h | 172.8h |
| 167 | 1.2.3.5 | **Secure SDK interfaces** | 8d | 2006-09-20 A | 2006-09-29 |  | 95% | 0.4d | 55d | 0d |  |  | 64h | 60.8h |
| 168 | 1.2.3.5.2 | Development | 8d | 2006-09-20 A | 2006-09-29 | 162 | 95% | 0.4d | 55d |  |  | Kunal | 64h | 60.8h |
| 169 | 1.2.3.3.2 | **SDK Instance Level Security Design** | 6d | 2006-10-02 A | 2006-10-09 |  | 75% | 1.5d | 52d |  |  |  | 48h | 36h |
| 170 | 1.2.3.3.2.1 | Design | 6d | 2006-10-02 A | 2006-10-09 | 167 | 75% | 1.5d | 52d |  |  | Kunal | 48h | 36h |

| ID | WBS | Task | Type | Duration | Start | Finish | Predecessors | Complete | Remaining | Total slack | Free slack | Constraint | Resources | Work | Actual work |
| --- | --- | --- | --- | --- | --- | --- | --- | --- | --- | --- | --- | --- | --- | --- | --- |
| 171 | 1.2.3.7 | **Defect Fixes** |  | 10d | 2006-09-20 A | 2006-10-03 |  | 95% | 0.5d | 38.5d | 0d |  |  | 80h | 76h |
| 172 | 1.2.3.7.1 | Development/Unit Test |  | 10d | 2006-09-20 A | 2006-10-03 | 162 | 95% | 0.5d | 38.5d |  |  | Vijay | 80h | 76h |
| 173 | 1.2.4.4 | QA Test Components |  | 3d | 2006-10-04 | 2006-10-06 | 171, 167 |  |  | 53d |  |  | QA | 24h |  |
| 174 | 1.2.4.5 | Perform Build for QA |  | 0.5d | 2006-10-04 | 2006-10-04 | 171 |  |  | 38.5d | 0d |  | Vijay | 4h |  |
| 175 | 1.2.5 | **Iteration 3** |  | 37.5d | 2006-10-04 A | 2006-11-28 |  | 8% | 34.35d | 18d |  |  |  | 536h | 33.6h |
| 176 | 1.2.5.1 | **Add a new "Type" attribute to Protection Element** |  | 3d | 2006-10-09 A | 2006-10-11 A |  | 100% |  |  |  |  |  | 24h | 24h |
| 177 | 1.2.5.1.1 | Development |  | 3d | 2006-10-09 A | 2006-10-11 A | 169 | 100% |  |  |  |  | Kunal | 24h | 24h |
| 178 | 1.2.3.7 | **Defect Fixes** |  | 9.5d | 2006-10-04 A | 2006-10-17 |  | 13% | 8.23d | 34d | 0d |  |  | 72h | 9.6h |
| 179 | 1.2.3.7.1 | Development/Unit Test |  | 5d | 2006-10-04 | 2006-10-11 | 174 |  |  | 38.5d | 0d |  | Vijay | 40h |  |
| 180 | 1.2.3.7.2 | Improve the Deployment of CSM & Integration with Other Apps |  | 4d | 2006-10-12 A | 2006-10-17 | 176 | 30% | 2.8d | 34d | 0d |  | Kunal | 32h | 9.6h |
| 181 | 1.2.5.3 | Begin Documentation Draft |  | 3d | 2006-10-11 | 2006-10-16 | 179 |  |  | 44.5d | 1.5d |  | Vijay | 24h |  |
| 182 | 1.2.3.9 | **Testing** |  | 3d | 2006-10-18 | 2006-10-20 |  |  |  | 34d |  |  |  | 72h |  |
| 183 | 1.2.3.9.2 | QA Test Components |  | 3d | 2006-10-18 | 2006-10-20 | 178, 181 |  |  | 43d |  |  | QA | 24h |  |
| 184 | 1.2.3.9.3 | Test Support |  | 3d | 2006-10-18 | 2006-10-20 | 178, 180 |  |  | 34d | 0d |  | Vijay; Kunal | 48h |  |
| 185 | 1.2.5.5 | **Documentation** |  | 5d | 2006-10-23 | 2006-10-27 |  |  |  | 7d |  |  |  | 80h |  |
| 186 | 1.2.5.5.1 | Write Draft Documentation/ Update User Guide |  | 5d | 2006-10-23 | 2006-10-27 | 184 |  |  | 34d | 0d |  | Vijay; Kunal | 80h |  |
| 187 | 1.2.5.5.2 | Draft Documentation/User Documentation Completed | milestone | 0d | 2006-10-27 | 2006-10-27 |  |  |  | 3d | 0d | start no earlier than 2006-10-27 |  |  |  |
| 188 | 1.2.5.6 | Internal System Testing Complete (QA Tier) | milestone | 0d | 2006-11-01 | 2006-11-01 |  |  |  | 36d |  | start no earlier than 2006-11-01 |  |  |  |
| 189 | 1.2.5.7 | Push Candidate to Staging |  | 4d | 2006-10-30 | 2006-11-02 | 186 |  |  | 34d |  |  | Kunal; Vijay | 64h |  |
| 190 | 1.2.6 | Release Candidate pushed to Stage Tier | milestone | 0d | 2006-11-03 | 2006-11-03 |  |  |  | 19d | 0d | start no earlier than 2006-11-03 |  |  |  |
| 191 | 1.2.5.9 | **Regression Testing** |  | 5d | 2006-11-03 | 2006-11-09 |  |  |  | 19d | 0d |  |  | 120h |  |
| 192 | 1.2.5.9.1 | Execution |  | 5d | 2006-11-03 | 2006-11-09 | 190 |  |  | 19d |  |  | QA | 40h |  |
| 193 | 1.2.5.9.2 | Test Support |  | 5d | 2006-11-03 | 2006-11-09 | 190 |  |  | 19d |  |  | Vijay; Kunal | 80h |  |
| 194 | 1.2.5.10 | **UAT Testing/Load Testing** |  | 10d | 2006-11-10 | 2006-11-24 |  |  |  | 19d |  |  |  | 80h |  |
| 195 | 1.2.5.10.1 | Test Execution/Suppport |  | 10d | 2006-11-10 | 2006-11-24 | 191 |  |  | 19d |  |  | Vijay [50%]; Kunal [50%] | 80h |  |
| 196 | 1.2.7 | UAT Complete | milestone | 0d | 2006-11-28 | 2006-11-28 |  |  |  | 18d |  | start no earlier than 2006-11-28 |  |  |  |

| ID | WBS | Task | Type | Duration | Start | Finish | Predecessors | Total slack | Free slack | Constraint | Resources | Work |
| --- | --- | --- | --- | --- | --- | --- | --- | --- | --- | --- | --- | --- |
| 197 | 1.3 | **Transition** |  | 39d | 2006-10-27 | 2006-12-22 |  | 0d |  |  |  | 520h |
| 198 | 1.3.1 | **Documentation** |  | 35d | 2006-10-27 | 2006-12-15 |  | 3d |  |  |  | 280h |
| 199 | 1.3.1.1 | Review Technical/User Docs |  | 11d | 2006-10-27 | 2006-11-10 | 187 | 3d | 0d |  | Tech Writing NCICB | 88h |
| 200 | 1.3.1.2 | Review Technical/User Docs Complete | milestone | 0d | 2006-11-10 | 2006-11-10 |  | 29d |  | start no earlier than 2006-11-10 |  |  |
| 201 | 1.3.1.3 | Incorporate Comments to User Docs |  | 10d | 2006-11-13 | 2006-11-27 | 199 | 3d | 0d |  | Vijay [50%]; Kunal [50%] | 80h |
| 202 | 1.3.1.4 | Incorporate Comments to User Docs Complete | milestone | 0d | 2006-11-28 | 2006-11-28 |  | 18d |  | start no earlier than 2006-11-28 |  |  |
| 203 | 1.3.1.5 | Finalize Documents |  | 14d | 2006-11-28 | 2006-12-15 | 201 | 4d |  |  | Tech Writing NCICB | 112h |
| 204 | 1.3.1.6 | Final Version of User Documents Complete | milestone | 0d | 2006-12-15 | 2006-12-15 |  | 5d |  | start no earlier than 2006-12-15 |  |  |
| 205 | 1.3.2 | Staging |  | 15d | 2006-11-28 | 2006-12-18 | 201 | 3d |  |  | Vijay; Kunal | 240h |
| 206 | 1.3.2 | Internal Staging Complete | milestone | 0d | 2006-12-19 | 2006-12-19 |  | 3d |  | start no earlier than 2006-12-19 |  |  |
| 207 | 1.3.3 | Push to Production | milestone | 0d | 2006-12-21 | 2006-12-21 |  | 1d |  | start no earlier than 2006-12-21 |  |  |
| 208 | 1.3.5 | Go Live | milestone | 0d | 2006-12-22 | 2006-12-22 |  | 0d |  | start no earlier than 2006-12-22 |  |  |
