# CSM 3.2

Schedule from MS Project, 2006-04-20 to 2006-11-20, A marks actual dates.
NCI

## Calendars

- Standard: Mon-Fri 08:00-12:00, 13:00-17:00; Sat-Sun off. Exceptions (off unless hours are given): 2006-05-29.

## Resources

| Resource |
| --- |
| Charles |
| Avinash |
| Kunal |
| Orlando |
| Steven |
| Denise |
| BioPharm |
| Kuanl |
| Steve |

## Schedule

| ID | WBS | Task | Type | Duration | Start | Finish | Predecessors | Complete | Remaining | Total slack | Free slack | Constraint | Resources | Work | Actual work |
| --- | --- | --- | --- | --- | --- | --- | --- | --- | --- | --- | --- | --- | --- | --- | --- |
| 1 | 1 | **CSM 3.2** |  | 151d? | 2006-04-20 A | 2006-11-20 |  | 13% | 131.68d? | 0d |  |  |  | 3034.2h | 507.6h |
| 2 | 1.1 | **Elaboration** |  | 57d? | 2006-04-20 A | 2006-07-11 |  | 33% | 38.06d? | 94d |  |  |  | 1308.6h | 507.6h |
| 3 | 1.1.1 | **Iteration 1** |  | 34d? | 2006-04-20 A | 2006-06-07 |  | 68% | 10.79d? | 117d |  |  |  | 638.8h | 507.6h |
| 4 | 1.1 | Kick off | milestone | 0d | 2006-04-20 A | 2006-04-20 A |  | 100% |  |  |  | start no earlier than 2006-04-20 | Denise; Charles; Orlando; Steven; Avinash |  |  |
| 5 | 1.1.1.2 | **21 CFR Part 11** |  | 34d | 2006-04-20 A | 2006-06-07 |  | 35% | 22.1d | 117d |  |  |  | 205.6h | 173.6h |
| 6 | 1.1.1.2.1 | Preperation |  | 7d | 2006-04-20 A | 2006-04-28 A |  | 100% |  |  |  |  | Charles [10%]; Orlando; Steven; Kunal | 173.6h | 173.6h |
| 7 | 1.1.1.2.2 | Kickoff Meeting With Biopharm | milestone | 0d | 2006-05-01 A | 2006-05-01 A |  | 100% |  |  |  | start no earlier than 2006-05-01 | Charles [10%]; Orlando; Steven; Kunal |  |  |
| 8 | 1.1.1.2.3 | Biopharm resources allocated | milestone | 0d | 2006-05-15 | 2006-05-15 |  |  |  | 119d | 0d | start no earlier than 2006-05-15 | BioPharm |  |  |
| 9 | 1.1.1.2.4 | Deliver Materials |  | 3d | 2006-05-17 | 2006-05-19 | 8FS+2d |  |  | 119d | 0d |  | Steven | 24h |  |
| 10 | 1.1.1.2.5 | Provide Validation Support |  | 10d | 2006-05-22 | 2006-06-07 | 9 |  |  | 117d |  |  | Steven [10%] | 8h |  |
| 11 | 1.1.1.3 | **Project Scope** |  | 20d? | 2006-05-01 A | 2006-05-26 |  | 88% | 2.38d? | 24.05d |  |  |  | 382h | 334h |
| 12 | 1.1.1.3.1 | Create/Revise Candidate Requirements Document |  | 4d | 2006-05-01 A | 2006-05-04 A | 6 | 100% |  |  |  |  | Charles [10%]; Steven; Orlando; Kunal | 99.2h | 99.2h |
| 13 | 1.2 | Revised Scope w/Product Manager | milestone | 0d | 2006-05-04 A | 2006-05-04 A |  | 100% |  |  |  |  | Charles; Avinash |  |  |
| 14 | 1.1.1.3.3 | Define Elaboration Task Plan |  | 1d? | 2006-05-05 A | 2006-05-05 A | 12 | 100% |  |  |  |  | Charles [10%]; Orlando; Kunal; Steven | 24.8h | 24.8h |
| 15 | 1.1.1.3.4 | Create/Update Scope Document |  | 15d | 2006-05-08 A | 2006-05-26 A | 14 | 100% |  |  |  |  | Charles [10%] | 12h | 12h |
| 16 | 1.1.1.3.5 | Obtain Changes/Fixes from BMS and map to current scope |  | 4d | 2006-05-15 A | 2006-05-18 A |  | 100% |  |  |  | start no earlier than 2006-05-15 | Steven [90%] | 28.8h | 28.8h |
| 17 | 1.1.1.3.6 | **LOE/Requirements Gathering** |  | 14d | 2006-05-08 A | 2006-05-25 | 14 | 77% | 3.17d | 25.05d | 0d |  |  | 217.2h | 169.2h |
| 18 | 1.1.1.3.6.1 | Obtain exact JDK version for next release |  | 0.25d | 2006-05-08 A | 2006-05-08 A |  | 100% |  |  |  |  | Kunal | 2h | 2h |
| 19 | 1.1.1.3.6.2 | High Level Diagram of Grid-CSM Integration |  | 2d | 2006-05-08 A | 2006-05-10 A | 18 | 100% |  |  |  |  | Kunal | 16h | 16h |
| 20 | 1.1.1.3.6.3 | High Level Diagram of CSM Web Service |  | 1d | 2006-05-10 A | 2006-05-11 A | 19 | 100% |  |  |  |  | Kunal | 8h | 8h |
| 21 | 1.1.1.3.6.4 | Deliver Diagrams to Avinash | milestone | 0d | 2006-05-11 A | 2006-05-11 A | 20 | 100% |  |  |  |  | Kuanl |  |  |
| 22 | 1.1.1.3.6.5 | IMF Presentation |  | 2d | 2006-05-11 A | 2006-05-15 A | 21 | 100% |  |  |  |  | Kunal | 16h | 16h |
| 23 | 1.1.1.3.6.6 | Estimate Tying User to Application |  | 1d | 2006-05-15 A | 2006-05-16 A | 22 | 100% |  |  |  |  | Kunal | 8h | 8h |
| 24 | 1.1.1.3.6.7 | Estimate for Grid Integration/ Project Scope Doc |  | 6d | 2006-05-16 | 2006-05-24 | 23 |  |  | 27.8d |  |  | Kunal | 48h |  |
| 25 | 1.1.1.3.6.8 | Meet with Apps for Performance Requirements |  | 0.25d | 2006-05-11 A | 2006-05-11 A |  | 100% |  |  |  | start no earlier than 2006-05-11 | Kunal; Orlando | 4h | 4h |
| 26 | 1.1.1.3.6.9 | Prototyp Generic LDAP |  | 2.5d | 2006-05-08 A | 2006-05-10 A |  | 100% |  |  |  |  | Orlando | 20h | 20h |
| 27 | 1.1.1.3.6.10 | Estimate Auth Policy Caching |  | 3d | 2006-05-10 A | 2006-05-15 A | 26 | 100% |  |  |  |  | Orlando | 24h | 24h |
| 28 | 1.1.1.3.6.11 | Estimate CLM Logging to text file and Log Viewer Mods |  | 2d | 2006-05-15 A | 2006-05-17 A | 27 | 100% |  |  |  |  | Orlando | 16h | 16h |
| 29 | 1.1.1.3.6.12 | Estimate BMS Webservice Integration |  | 2.5d | 2006-05-17 A | 2006-05-19 A | 28 | 100% |  |  |  |  | Orlando | 20h | 20h |
| 30 | 1.1.1.3.6.13 | Estimate BMS Integration Work |  | 4d | 2006-05-22 A | 2006-05-25 A | 29 | 100% |  |  |  |  | Orlando; Charles [10%] | 35.2h | 35.2h |
| 31 | 1.1.1.4 | NCICB Management Review Complete | milestone | 0d | 2006-05-17 A | 2006-05-17 A |  | 100% |  |  |  | start no earlier than 2006-05-17 |  |  |  |
| 32 | 1.1.1.5 | Update Scope |  | 2.95d | 2006-05-26 | 2006-05-31 | 17 |  |  | 26.05d | 0d |  | Charles [10%]; Orlando; Kunal | 49.6h |  |
| 33 | 1.1.1.6 | User Feedback Sessions Complete | milestone | 0d | 2006-05-26 A | 2006-05-26 A |  | 100% |  |  |  | start no earlier than 2006-05-26 |  |  |  |
| 34 | 1.1.1.7 | Final Scope Document Complete | milestone | 0d | 2006-05-29 | 2006-05-29 |  |  |  | 122d | 0d | start no earlier than 2006-05-29 |  |  |  |
| 35 | 1.1.1.8 | Revise Task Plan |  | 2d | 2006-05-30 | 2006-05-31 | 34 |  |  | 122d |  |  | Charles [10%] | 1.6h |  |

| ID | WBS | Task | Type | Duration | Start | Finish | Predecessors | Total slack | Free slack | Constraint | Resources | Work |
| --- | --- | --- | --- | --- | --- | --- | --- | --- | --- | --- | --- | --- |
| 36 | 1.1.2 | **Iteration 2** |  | 22d | 2006-05-19 | 2006-06-21 |  | 33d |  |  |  | 243.4h |
| 37 | 1.1.2.1 | **Detail Requirements** |  | 16.95d | 2006-05-19 | 2006-06-13 |  | 33d | 0d |  |  | 225h |
| 38 | 1.1.2.1.1 | **Define Use Cases** |  | 16.95d | 2006-05-19 | 2006-06-13 |  | 33d |  |  |  | 225h |
| 39 | 1.1.2.1.1.1 | **UPT** |  | 10.5d | 2006-05-19 | 2006-06-05 |  | 116.5d |  |  |  | 68.4h |
| 40 | 1.1.2.1.1.1.1 | Write Initial Draft 30% |  | 1.5d | 2006-05-19 | 2006-05-22 | 16 | 119.5d | 0d |  | Steven | 12h |
| 41 | 1.1.2.1.1.1.2 | Write Internal Review 60 % |  | 1.5d | 2006-05-22 | 2006-05-23 | 40 | 119.5d | 0d |  | Steven | 12h |
| 42 | 1.1.2.1.1.1.3 | Write Final Complete 100% |  | 2d | 2006-05-24 | 2006-05-25 | 41 | 119.5d | 0d |  | Steven | 16h |
| 43 | 1.1.2.1.1.1.4 | Review |  | 1d | 2006-05-26 | 2006-05-31 | 42 | 117.5d | 0d |  | Steven; Charles [10%] | 4.4h |
| 44 | 1.1.2.1.1.1.5 | Update per Review |  | 3d | 2006-05-31 | 2006-06-05 | 43 | 116.5d |  |  | Steven | 24h |
| 45 | 1.1.2.1.1.2 | **Web Service** |  | 5d | 2006-05-31 | 2006-06-07 |  | 25.05d | 0d |  |  | 48.2h |
| 46 | 1.1.2.1.1.2.1 | Write Internal Review 60% |  | 3d | 2006-05-31 | 2006-06-05 | 32 | 25.05d | 0d |  | Kunal | 24h |
| 47 | 1.1.2.1.1.2.2 | Write Final Complete 100% |  | 1d | 2006-06-05 | 2006-06-06 | 46 | 25.05d | 0d |  | Kunal | 8h |
| 48 | 1.1.2.1.1.2.3 | Review |  | 0.25d | 2006-06-06 | 2006-06-07 | 47 | 25.05d | 0d |  | Kunal; Steve; Charles [10%] | 4.2h |
| 49 | 1.1.2.1.1.2.4 | Update per Review |  | 0.75d | 2006-06-07 | 2006-06-07 | 48 | 25.05d |  |  | Kunal; Steve | 12h |
| 50 | 1.1.2.1.1.3 | **CSM APIs** |  | 7.5d | 2006-05-31 | 2006-06-12 |  | 111.55d | 0d |  |  | 68.2h |
| 51 | 1.1.2.1.1.3.1 | Write Initial Draft 30% |  | 2.5d | 2006-05-31 | 2006-06-05 | 32 | 111.55d | 0d |  | Orlando | 20h |
| 52 | 1.1.2.1.1.3.2 | Write Internal Review 60 % |  | 2d | 2006-06-05 | 2006-06-07 | 51 | 111.55d | 0d |  | Orlando | 16h |
| 53 | 1.1.2.1.1.3.3 | Write Final Complete 100% |  | 2d | 2006-06-07 | 2006-06-09 | 52 | 111.55d | 0d |  | Orlando | 16h |
| 54 | 1.1.2.1.1.3.4 | Review |  | 0.25d | 2006-06-09 | 2006-06-09 | 53 | 111.55d | 0d |  | Orlando; Steve; Charles [10%] | 4.2h |
| 55 | 1.1.2.1.1.3.5 | Update per Review |  | 0.75d | 2006-06-09 | 2006-06-12 | 54 | 111.55d |  |  | Orlando; Steve | 12h |
| 56 | 1.1.2.1.1.4 | **- Performance Enhancements** |  | 4d | 2006-06-07 | 2006-06-13 |  | 25.05d | 0d |  |  | 40.2h |
| 57 | 1.1.2.1.1.4.1 | Write Internal Review 60% |  | 2d | 2006-06-07 | 2006-06-09 | 45 | 25.05d | 0d |  | Kunal | 16h |
| 58 | 1.1.2.1.1.4.2 | Write Final Complete 100% |  | 1d | 2006-06-09 | 2006-06-12 | 57 | 25.05d | 0d |  | Kunal | 8h |
| 59 | 1.1.2.1.1.4.3 | Review |  | 0.25d | 2006-06-12 | 2006-06-13 | 58 | 25.05d | 0d |  | Kunal; Steve; Charles [10%] | 4.2h |
| 60 | 1.1.2.1.1.4.4 | Update per Review |  | 0.75d | 2006-06-13 | 2006-06-13 | 59 | 25.05d | 0d |  | Kunal; Steve | 12h |
| 61 | 1.1.2.2 | General Requirements Phase Complete | milestone | 0d | 2006-06-07 | 2006-06-07 |  | 118d |  | start no earlier than 2006-06-07 |  |  |
| 62 | 1.1.2.3 | Revise Scope Document |  | 1d | 2006-06-13 | 2006-06-14 | 37 | 110.05d | 0d |  | Charles [10%] | 0.8h |
| 63 | 1.1.2.4 | Revised Scope Document Complete | milestone | 0d | 2006-06-08 | 2006-06-08 |  | 117d |  | start no earlier than 2006-06-08 |  |  |
| 64 | 1.1.2.5 | Update CSM Model |  | 2d | 2006-06-12 | 2006-06-14 | 50 | 112.55d |  |  | Orlando | 16h |
| 65 | 1.1.2.6 | UML Model Changes Approved | milestone | 0d | 2006-06-09 | 2006-06-09 |  | 99d | 0d | start no earlier than 2006-06-09 | Orlando |  |
| 66 | 1.1.2.7 | Revise Task Plan |  | 2d | 2006-06-14 | 2006-06-16 | 62 | 110.05d |  |  | Charles [10%] | 1.6h |
| 67 | 1.1.2.8 | Project Manager Project Plan Complete | milestone | 0d | 2006-06-12 | 2006-06-12 |  | 115d |  | start no earlier than 2006-06-12 |  |  |
| 68 | 1.1.2.9 | Product Manager Project Plan Complete | milestone | 0d | 2006-06-14 | 2006-06-14 |  | 113d |  | start no earlier than 2006-06-14 |  |  |
| 69 | 1.1.2.10 | caCore Project Plan Complete | milestone | 0d | 2006-06-21 | 2006-06-21 |  | 108d |  | start no earlier than 2006-06-21 |  |  |

| ID | WBS | Task | Type | Duration | Start | Finish | Predecessors | Total slack | Free slack | Constraint | Resources | Work |
| --- | --- | --- | --- | --- | --- | --- | --- | --- | --- | --- | --- | --- |
| 70 | 1.1.3 | **Iteration 3** |  | 22d | 2006-06-09 | 2006-07-11 |  | 28d |  |  |  | 426.4h |
| 71 | 1.1.3.1 | Review Testability of Requirements |  | 4d | 2006-06-13 | 2006-06-19 | 60 | 94.55d | 0d |  | Steven | 32h |
| 72 | 1.1.3.2 | Test Plan Development Intial Template Draft |  | 2d | 2006-06-19 | 2006-06-21 | 71 | 94.55d | 0d |  | Steven | 16h |
| 73 | 1.1.3.3 | Test Plan Development 80% Completion |  | 6d | 2006-06-21 | 2006-06-29 | 72 | 97.05d | 0d |  | Steven | 48h |
| 74 | 1.1.3.4 | Test Plan Development Internal Review 100% Completion |  | 2d | 2006-06-29 | 2006-07-03 | 73 | 97.05d | 0d |  | Steven | 16h |
| 75 | 1.1.3.5 | Test Plan Development Rework |  | 2d | 2006-07-03 | 2006-07-05 | 74 | 97.05d |  |  | Steven | 16h |
| 76 | 1.1.3.6 | **Prototype** |  | 10d | 2006-06-09 | 2006-06-22 |  | 28d |  |  |  | 120h |
| 77 | 1.1.3.6.1 | Auth Caching |  | 4d | 2006-06-13 | 2006-06-19 | 56 | 25.05d | 0d |  | Kunal | 32h |
| 78 | 1.1.3.6.2 | Auth Caching - Review and Baselining |  | 1d | 2006-06-19 | 2006-06-20 | 77 | 25.05d | 0d |  | Kunal | 8h |
| 79 | 1.1.3.6.3 | Open/Active Directory LDAP |  | 4d | 2006-06-09 | 2006-06-14 | 65 | 99d | 0d |  | Orlando | 32h |
| 80 | 1.1.3.6.4 | Open/Active Directory LDAP - Code Review and Baselining |  | 1d | 2006-06-15 | 2006-06-15 | 79 | 99d | 0d |  | Orlando | 8h |
| 81 | 1.1.3.6.5 | Schema Support for SQL Server |  | 4d | 2006-06-16 | 2006-06-21 | 80 | 99d | 0d |  | Orlando | 32h |
| 82 | 1.1.3.6.6 | Schema Support for SQL Server - Code Review and Baselining |  | 1d | 2006-06-22 | 2006-06-22 | 81 | 99d | 0d |  | Orlando | 8h |
| 83 | 1.1.3.7 | Performance Design Peparation |  | 3.5d | 2006-06-20 | 2006-06-26 | 78 | 25.05d | 0d |  | Kunal | 28h |
| 84 | 1.1.3.8 | Performance Design Internal Review |  | 0.5d | 2006-06-26 | 2006-06-26 | 83 | 25.05d | 0d |  | Kunal | 4h |
| 85 | 1.1.3.9 | Performance Design Rework |  | 1d | 2006-06-26 | 2006-06-27 | 84 | 25.05d | 0d |  | Kunal | 8h |
| 86 | 1.1.3.10 | CSM & CLM Design docs Preparation |  | 5d | 2006-06-23 | 2006-06-29 | 82 | 99d | 0d |  | Orlando | 40h |
| 87 | 1.1.3.11 | CSM & CLM Design docs Internal Review |  | 1d | 2006-06-30 | 2006-06-30 | 86 | 99d | 0d |  | Orlando; Kunal | 16h |
| 88 | 1.1.3.12 | CSM & CLM Design docs Rework |  | 1d | 2006-07-03 | 2006-07-03 | 87 | 99d |  |  | Orlando | 8h |
| 89 | 1.1.3.13 | CSM SAD |  | 3d | 2006-06-27 | 2006-06-30 | 85 | 25.05d | 0d |  | Kunal | 24h |
| 90 | 1.1.3.14 | Design Reviews |  | 3d | 2006-06-30 | 2006-07-05 | 89 | 25.05d | 0d |  | Orlando; Kunal; Charles [10%] | 50.4h |
| 91 | 1.1.3.15 | Design Documents Posted/Review Completed | milestone | 0d | 2006-07-11 | 2006-07-11 |  | 18d | 1d | start no earlier than 2006-07-11 |  |  |
| 92 | 1.2 | **Construction** |  | 94.05d | 2006-06-21 | 2006-10-31 |  | 13d |  |  |  | 1725.6h |
| 93 | 1.2.1 | Production Support |  | 80d | 2006-07-12 | 2006-10-31 | 91 | 13d |  | start no earlier than 2006-07-12 | Orlando [15%]; Kunal [15%]; Steven [15%] | 273.6h |

| ID | WBS | Task | Type | Duration | Start | Finish | Predecessors | Total slack | Free slack | Resources | Work |
| --- | --- | --- | --- | --- | --- | --- | --- | --- | --- | --- | --- |
| 94 | 1.2.2 | **Iteration 1** |  | 28d | 2006-06-21 | 2006-07-31 |  | 35.05d |  |  | 404h |
| 95 | 1.2.2.1 | **Hibernate 3.1 Upgrade/JDK Backwards Compatibility/MySQL Upgrade Test** |  | 6d | 2006-07-05 | 2006-07-13 |  | 81.05d |  |  | 48h |
| 96 | 1.2.2.1.1 | Development |  | 5d | 2006-07-05 | 2006-07-12 | 90 | 81.05d | 0d | Orlando | 40h |
| 97 | 1.2.2.1.2 | Regression Testing |  | 1d | 2006-07-12 | 2006-07-13 | 96 | 81.05d | 0d | Orlando | 8h |
| 98 | 1.2.2.2 | **Open LDAP/Active Directory Authorization** |  | 4d | 2006-07-13 | 2006-07-19 |  | 81.05d |  |  | 32h |
| 99 | 1.2.2.2.1 | Design |  | 1d | 2006-07-13 | 2006-07-14 | 97 | 81.05d | 0d | Orlando | 8h |
| 100 | 1.2.2.2.2 | Development/Unit Test |  | 3d | 2006-07-14 | 2006-07-19 | 99 | 81.05d | 0d | Orlando | 24h |
| 101 | 1.2.2.3 | **Auth Policy Caching** |  | 14d | 2006-07-05 | 2006-07-25 |  | 25.05d |  |  | 112h |
| 102 | 1.2.2.3.1 | Design |  | 1d | 2006-07-05 | 2006-07-06 | 90 | 25.05d | 0d | Kunal | 8h |
| 103 | 1.2.2.3.2 | Development/Unit Testing |  | 13d | 2006-07-06 | 2006-07-25 | 102 | 25.05d | 0d | Kunal | 104h |
| 104 | 1.2.2.4 | **BMS Web Service Integration** |  | 6d | 2006-07-19 | 2006-07-27 |  | 81.05d |  |  | 48h |
| 105 | 1.2.2.4.1 | Design |  | 1d | 2006-07-19 | 2006-07-20 | 100 | 81.05d | 0d | Orlando | 8h |
| 106 | 1.2.2.4.2 | Development/Unit Test |  | 5d | 2006-07-20 | 2006-07-27 | 105 | 81.05d | 0d | Orlando | 40h |
| 107 | 1.2.2.5 | Components Deployed on Dev Server | milestone | 0d | 2006-07-27 | 2006-07-27 | 106 | 81.05d |  | Kunal; Orlando |  |
| 108 | 1.2.2.6 | **Regression Test Complete Code Coverage** |  | 6.5d | 2006-06-21 | 2006-06-30 |  | 94.55d |  |  | 52h |
| 109 | 1.2.2.6.1 | Implementation |  | 6.5d | 2006-06-21 | 2006-06-30 | 72 | 94.55d | 0d | Steven | 52h |
| 110 | 1.2.2.7 | QA Test |  | 6d | 2006-06-30 | 2006-07-18 | 109 | 88.55d |  | Steven | 48h |
| 111 | 1.2.2.8 | Testing Support |  | 4d | 2006-07-25 | 2006-07-31 | 103 | 25.05d | 0d | Kunal; Orlando | 64h |
| 112 | 1.2.3 | **Iteration 2** |  | 54d | 2006-07-31 | 2006-10-13 | 111 | 25.05d |  |  | 1048h |
| 113 | 1.2.3.1 | **Application Specific UPT and APIs** |  | 7d | 2006-07-31 | 2006-08-09 |  | 27.05d |  |  | 56h |
| 114 | 1.2.3.1.1 | Design |  | 2d | 2006-07-31 | 2006-08-02 | 111 | 27.05d | 0d | Orlando | 16h |
| 115 | 1.2.3.1.2 | Development/Unit Test |  | 5d | 2006-08-02 | 2006-08-09 | 114 | 27.05d | 0d | Orlando | 40h |
| 116 | 1.2.3.2 | **Improve Exception Handling** |  | 5d | 2006-08-09 | 2006-08-16 |  | 27.05d |  |  | 40h |
| 117 | 1.2.3.2.1 | Development/Unit Test |  | 5d | 2006-08-09 | 2006-08-16 | 115 | 27.05d | 0d | Orlando | 40h |

| ID | WBS | Task | Type | Duration | Start | Finish | Predecessors | Total slack | Free slack | Constraint | Resources | Work |
| --- | --- | --- | --- | --- | --- | --- | --- | --- | --- | --- | --- | --- |
| 118 | 1.2.3.3 | **Performance Enhancements** |  | 9d | 2006-07-31 | 2006-08-11 |  | 25.05d |  |  |  | 72h |
| 119 | 1.2.3.3.1 | **Fix Update Methods** |  | 3d | 2006-07-31 | 2006-08-03 |  | 25.05d |  |  |  | 24h |
| 120 | 1.2.3.3.1.1 | Development/Unit Test |  | 3d | 2006-07-31 | 2006-08-03 | 111 | 25.05d | 0d |  | Kunal | 24h |
| 121 | 1.2.3.3.2 | **Add Protection Element Type and Retrieve All Accessible Values by Type Method** |  | 6d | 2006-08-03 | 2006-08-11 |  | 25.05d |  |  |  | 48h |
| 122 | 1.2.3.3.2.1 | Design |  | 2d | 2006-08-03 | 2006-08-07 | 120 | 25.05d | 0d |  | Kunal | 16h |
| 123 | 1.2.3.3.2.2 | Development |  | 4d | 2006-08-07 | 2006-08-11 | 122 | 25.05d | 0d |  | Kunal | 32h |
| 124 | 1.2.3.4 | **Grid SAML Assertion Support** |  | 20d | 2006-08-11 | 2006-09-08 |  | 25.05d |  |  |  | 160h |
| 125 | 1.2.3.4.1 | Design |  | 5d | 2006-08-11 | 2006-08-18 | 123 | 25.05d | 0d |  | Kunal | 40h |
| 126 | 1.2.3.4.2 | Development |  | 15d | 2006-08-18 | 2006-09-08 | 125 | 25.05d | 0d |  | Kunal | 120h |
| 127 | 1.2.3.5 | **Secure SDK interfaces** |  | 10d | 2006-09-08 | 2006-09-22 |  | 25.05d |  |  |  | 80h |
| 128 | 1.2.3.5.1 | Design |  | 2d | 2006-09-08 | 2006-09-12 | 126 | 25.05d | 0d |  | Kunal | 16h |
| 129 | 1.2.3.5.2 | Development |  | 8d | 2006-09-12 | 2006-09-22 | 128 | 25.05d | 0d |  | Kunal | 64h |
| 130 | 1.2.3.6 | **BMS Code Integration** |  | 15d | 2006-08-16 | 2006-09-06 |  | 27.05d |  |  |  | 120h |
| 131 | 1.2.3.6.1 | Design |  | 2d | 2006-08-16 | 2006-08-18 | 117 | 27.05d | 0d |  | Orlando | 16h |
| 132 | 1.2.3.6.2 | Development |  | 13d | 2006-08-18 | 2006-09-06 | 131 | 27.05d | 0d |  | Orlando | 104h |
| 133 | 1.2.3.7 | **Defect Fixes** |  | 17d | 2006-09-06 | 2006-09-29 |  | 25.05d | 0d |  |  | 160h |
| 134 | 1.2.3.7.1 | Development/Unit Test |  | 15d | 2006-09-06 | 2006-09-27 | 132 | 27.05d | 2d |  | Orlando | 120h |
| 135 | 1.2.3.7.2 | Development/Unit Test |  | 5d | 2006-09-22 | 2006-09-29 | 129 | 25.05d | 0d |  | Kunal | 40h |
| 136 | 1.2.3.8 | Deploy Components to Dev Server | milestone | 0d | 2006-09-29 | 2006-09-29 | 134, 135 | 35.05d |  |  | Orlando; Kunal |  |
| 137 | 1.2.3.9 | **Testing** |  | 45d | 2006-08-11 | 2006-10-13 |  | 25.05d |  |  |  | 360h |
| 138 | 1.2.3.9.1 | Load & Component Test Development |  | 15d | 2006-08-11 | 2006-09-01 | 123 | 45.05d | 20d |  | Steven | 120h |
| 139 | 1.2.3.9.2 | QA Test Components |  | 10d | 2006-09-29 | 2006-10-13 | 138, 133 | 25.05d |  |  | Steven | 80h |
| 140 | 1.2.3.9.3 | Test Support |  | 10d | 2006-09-29 | 2006-10-13 | 133 | 25.05d |  |  | Orlando; Kunal | 160h |
| 141 | 1.2.5 | Internal System Testing Complete (QA Tier) | milestone | 0d | 2006-10-16 | 2006-10-16 |  | 25d |  | start no earlier than 2006-10-16 |  |  |
| 142 | 1.2.6 | Release Candidate pushed to Staget Tier | milestone | 0d | 2006-10-17 | 2006-10-17 |  | 24d |  | start no earlier than 2006-10-17 |  |  |
| 143 | 1.2.7 | UAT Complete (Stage Tier) | milestone | 0d | 2006-10-25 | 2006-10-25 |  | 18d |  | start no earlier than 2006-10-25 |  |  |

| ID | WBS | Task | Type | Duration | Start | Finish | Total slack | Constraint |
| --- | --- | --- | --- | --- | --- | --- | --- | --- |
| 144 | 1.3 | **Transition** |  | 7d | 2006-11-09 | 2006-11-20 | 0d |  |
| 145 | 1.3.1 | Final Release Ready | milestone | 0d | 2006-11-09 | 2006-11-09 | 7d | start no earlier than 2006-11-09 |
| 146 | 1.3.2 | Internal Staging Regression Testing Complete | milestone | 0d | 2006-11-17 | 2006-11-17 | 1d | start no earlier than 2006-11-17 |
| 147 | 1.3.3 | Final Release | milestone | 0d | 2006-11-20 | 2006-11-20 | 0d | start no earlier than 2006-11-20 |
